# release-plan

Schedule from MS Project, 2007-03-02 to 2007-05-15, 6 hours a day.
HP

## Calendars

- Standard: Mon-Fri 10:00-12:00, 13:00-16:00; Sat-Sun off.

## Resources

| Resource |
| --- |
| Steve |
| Julio |
| Ritu |
| Kumar |
| Patrick |
| Peter |
| Paul |
| Antonio |
| Julian Richards |

## Schedule

| ID | WBS | Task | Type | Duration | Start | Finish | Predecessors | Total slack | Free slack | Constraint | Resources | Work | Text1 | Text2 |
| --- | --- | --- | --- | --- | --- | --- | --- | --- | --- | --- | --- | --- | --- | --- |
| 1 | 1 | **Public Events** |  | 44d | 2007-03-02 | 2007-05-15 |  | 0d |  |  |  | 72h |  |  |
| 2 | 1.1 | ApacheCon slides+demo |  | 3d | 2007-03-02 | 2007-03-07 |  | 32.83d |  |  | Steve; Julio | 36h |  |  |
| 3 | 1.2 | ApacheCon |  | 3d | 2007-05-02 | 2007-05-07 | 2 | 0d |  | must start on 2007-05-02 | Steve; Julio | 36h |  |  |
| 4 | 1.3 | GGF20 |  | 4d | 2007-05-09 | 2007-05-15 |  | 0d |  | must start on 2007-05-09 |  |  |  |  |
| 6 | 2 | Investigation |  | 1.33d? | 2007-03-02 | 2007-03-05 |  | 42.67d |  |  |  |  |  |  |
| 8 | 3 | Core | milestone | 0d | 2007-03-02 | 2007-03-02 |  | 44d |  |  |  |  |  |  |
| 10 | 4 | **Components** |  | 4d? | 2007-03-02 | 2007-03-08 |  | 40d |  |  |  | 6h |  |  |
| 11 | 4.1 | **XML** |  | 0d | 2007-03-02 | 2007-03-02 |  | 44d |  |  |  |  |  |  |
| 12 | 4.1.1 | XML Complete | milestone | 0d | 2007-03-02 | 2007-03-02 |  | 44d |  |  |  |  |  |  |
| 13 | 4.2 | JMX |  | 1d? | 2007-03-02 | 2007-03-05 |  | 43d |  |  | Julio | 6h |  |  |
| 14 | 4.3 | **Database Component** |  | 1d? | 2007-03-02 | 2007-03-05 |  | 43d |  |  |  |  |  |  |
| 15 | 4.3.1 | SFOS-77 Document Database |  | 1d? | 2007-03-02 | 2007-03-05 |  | 43d |  | start no earlier than 2007-03-02 |  |  | http://jira.smartfrog.org/jira/browse/SFOS-77 | SFOS-77 |
| 19 | 4.4 | **JUnit component** |  | 4d? | 2007-03-02 | 2007-03-08 |  | 40d |  |  |  |  |  |  |
| 20 | 4.4.1 | JUnit tracing component |  | 1d | 2007-03-02 | 2007-03-05 |  | 42d | 2d |  |  |  |  |  |
| 21 | 4.4.2 | JUnit report save/postprocess |  | 3d? | 2007-03-02 | 2007-03-07 |  | 40d | 0d |  |  |  |  |  |
| 22 | 4.4.3 | JUnit documentation |  | 1d? | 2007-03-07 | 2007-03-08 | 20, 21 | 40d |  |  |  |  |  |  |
| 24 | 5 | Extras |  | 1.33d? | 2007-03-02 | 2007-03-05 |  | 42.67d |  |  |  |  |  |  |
| 26 | 6 | **Functionality Milestones** |  | 0d | 2007-03-02 | 2007-03-02 |  | 44d |  |  |  |  |  |  |
| 27 | 6.1 | Investigation Complete | milestone | 0d | 2007-03-02 | 2007-03-02 |  | 44d |  |  |  |  |  |  |
| 29 | 7 | **Articles and Press** |  | 2d | 2007-03-02 | 2007-03-06 |  | 42d |  |  |  | 3h |  |  |
| 30 | 7.1 | Release press note |  | 3h | 2007-03-02 | 2007-03-02 |  | 42.17d | 0d |  | Julian Richards | 3h |  |  |
| 31 | 7.2 | TSS Article |  | 2d | 2007-03-02 | 2007-03-06 |  | 42d |  |  |  |  |  |  |
| 32 | 7.3 | HP Developer Articles |  | 2d | 2007-03-02 | 2007-03-06 |  | 42d |  |  |  |  |  |  |
| 34 | 8 | Releases |  | 1.33d? | 2007-03-02 | 2007-03-06 | 30 | 42.17d |  |  |  |  |  |  |
| 35 | 9 | 3.11.alpha | milestone | 0d | 2007-03-02 | 2007-03-02 |  | 44d |  | start no earlier than 2007-03-02 |  |  |  |  |
| 36 | 10 | 3.11.beta | milestone | 0d | 2007-03-02 | 2007-03-02 |  | 44d |  | start no earlier than 2007-03-02 |  |  |  |  |
| 37 | 11 | 3.11.gold | milestone | 0d | 2007-03-02 | 2007-03-02 |  | 44d |  | start no earlier than 2007-03-02 |  |  |  |  |
| 39 | 12 | External Dependencies |  | 1.33d? | 2007-03-02 | 2007-03-05 |  | 42.67d |  |  |  |  |  |  |
| 41 | 13 | web site |  | 1d? | 2007-03-02 | 2007-03-05 |  | 43d |  |  |  |  |  |  |

Notes:
- 14: Documentation. Anything else
- 26: These are things we can check off as done when we have the tests working, and represent major milestones in usable functionality. / Essentially, these are "stories" or "Use Cases"
- 27: Here we know what we want to do.
