# release-plan

Schedule from MS Project, 2007-03-02 to 2007-05-15, status date 2007-03-13, 6 hours a day.
HP

## Calendars

- Standard: Mon-Fri 10:00-12:00, 13:00-16:00; Sat-Sun off.

## Resources

| Resource |
| --- |
| Steve |
| Julio |
| Ritu |
| Kumar |
| Patrick |
| Peter |
| Paul |
| Antonio |
| Julian Richards |

## Schedule

| ID | WBS | Task | Type | Duration | Start | Finish | Predecessors | Total slack | Free slack | Constraint | Resources | Work | Text1 | Text2 |
| --- | --- | --- | --- | --- | --- | --- | --- | --- | --- | --- | --- | --- | --- | --- |
| 2 | 1 | **Planning** |  | 0.33d | 2007-03-02 | 2007-03-02 |  | 43.67d |  |  |  | 2h |  |  |
| 3 | 1.1 | Initial Release Plan |  | 2h | 2007-03-02 | 2007-03-02 |  | 43.67d |  | start no earlier than 2007-03-02 | Steve | 2h |  |  |
| 4 | 2 | **Core** |  | 2d | 2007-03-02 | 2007-03-06 |  | 42d |  |  |  | 6h |  |  |
| 5 | 2.1 | **Workflow** |  | 2d | 2007-03-02 | 2007-03-06 |  | 42d |  |  |  | 6h |  |  |
| 6 | 2.1.1 | While component |  | 1d | 2007-03-02 | 2007-03-05 |  | 43d |  | start no earlier than 2007-03-02 | Steve | 6h |  |  |
| 7 | 2.1.2 | SFOS-79 More workflow tests |  | 2d | 2007-03-02 | 2007-03-06 |  | 42d |  | start no earlier than 2007-03-02 |  |  |  |  |
| 8 | 2.1.3 | Workflow documentation |  | 1d | 2007-03-02 | 2007-03-05 |  | 43d |  | start no earlier than 2007-03-02 |  |  |  |  |
| 9 | 3 | **Components** |  | 3d? | 2007-03-02 | 2007-03-07 |  | 41d |  |  |  | 54h |  |  |
| 10 | 3.1 | **XML** |  | 2d | 2007-03-02 | 2007-03-06 |  | 42d |  |  |  |  |  |  |
| 11 | 3.1.1 | XML documentation |  | 2d | 2007-03-02 | 2007-03-06 |  | 42d |  | start no earlier than 2007-03-02 |  |  |  |  |
| 12 | 3.1.2 | XML Complete | milestone | 0d | 2007-03-02 | 2007-03-02 |  | 44d |  |  |  |  |  |  |
| 13 | 3.2 | **JMX** |  | 1d? | 2007-03-02 | 2007-03-05 |  | 43d |  |  | Julio | 12h |  |  |
| 14 | 3.2.1 | Documentation |  | 1d? | 2007-03-02 | 2007-03-05 |  | 43d |  | start no earlier than 2007-03-02 | Julio | 6h |  |  |
| 15 | 3.3 | **Database Component** |  | 3d? | 2007-03-02 | 2007-03-07 |  | 41d |  |  | Steve | 42h |  |  |
| 16 | 3.3.1 | SFOS-80: CounterAction component |  | 1d? | 2007-03-02 | 2007-03-05 |  | 41d | 0d | start no earlier than 2007-03-02 | Steve | 6h | http://jira.smartfrog.org/jira/browse/SFOS-80 | SFOS-80 |
| 17 | 3.3.2 | SFOS-81 SQL Select component |  | 1d? | 2007-03-05 | 2007-03-06 | 16 | 41d | 0d | start no earlier than 2007-03-02 | Steve | 6h | http://jira.smartfrog.org/jira/browse/SFOS-81 | SFOS-81 |
| 18 | 3.3.3 | SFOS-77 Document Database |  | 1d? | 2007-03-06 | 2007-03-07 | 17, 16 | 41d | 0d | start no earlier than 2007-03-02 | Steve | 6h | http://jira.smartfrog.org/jira/browse/SFOS-77 | SFOS-77 |
| 19 | 3.3.4 | SFOS-82 Add tests for TerminationTransaction |  | 1d? | 2007-03-02 | 2007-03-05 |  | 43d | 2d | start no earlier than 2007-03-02 | Steve | 6h | http://jira.smartfrog.org/jira/browse/SFOS-82 | SFOS-82 |
| 20 | 3.3.5 | Database Complete | milestone | 0d | 2007-03-07 | 2007-03-07 | 16, 17, 18, 19 | 41d |  | start no earlier than 2007-03-02 | Steve |  |  |  |
| 21 | 4 | **Releases** |  | 22.5d | 2007-03-15 | 2007-04-20 | 54 | 14d |  |  |  |  |  |  |
| 22 | 4.1 | 3.11.alpha | milestone | 0d | 2007-03-15 | 2007-03-15 |  | 36.5d |  | start no earlier than 2007-03-15 |  |  |  |  |
| 23 | 4.2 | 3.11.beta | milestone | 0d | 2007-03-30 | 2007-03-30 |  | 26.5d |  | finish no earlier than 2007-03-30 |  |  |  |  |
| 24 | 4.3 | 3.11.gold | milestone | 0d | 2007-04-20 | 2007-04-20 |  | 14d |  | finish no earlier than 2007-04-20 |  |  |  |  |
| 25 | 5 | **NetBeans Plugin** |  | 3d? | 2007-03-02 | 2007-03-07 |  | 41d |  |  |  |  |  |  |
| 26 | 5.1 | Obtain Source |  | 1d? | 2007-03-02 | 2007-03-05 |  | 41d | 0d | start no earlier than 2007-03-02 |  |  |  |  |
| 27 | 5.2 | Add to build process |  | 1d? | 2007-03-05 | 2007-03-06 | 26 | 41d | 0d | start no earlier than 2007-03-02 |  |  |  |  |
| 28 | 5.3 | Build and package |  | 1d? | 2007-03-06 | 2007-03-07 | 27 | 41d | 0d | start no earlier than 2007-03-02 |  |  |  |  |
| 29 | 5.4 | Documentation |  | 1d? | 2007-03-05 | 2007-03-06 | 26 | 42d | 1d | start no earlier than 2007-03-02 |  |  |  |  |
| 30 | 5.5 | Netbeans Plugin ready | milestone | 0d | 2007-03-07 | 2007-03-07 | 28, 29 | 41d |  | start no earlier than 2007-03-02 |  |  |  |  |

| ID | WBS | Task | Duration | Start | Finish | Predecessors | Total slack | Free slack | Constraint | Resources | Work |
| --- | --- | --- | --- | --- | --- | --- | --- | --- | --- | --- | --- |
| 31 | 6 | **Documentation** | 1d? | 2007-03-02 | 2007-03-05 |  | 43d |  |  |  | 2h |
| 32 | 6.1 | Review sfReference | 1d? | 2007-03-02 | 2007-03-05 |  | 43d |  | start no earlier than 2007-03-02 |  |  |
| 33 | 6.2 | Review quick reference | 1d? | 2007-03-02 | 2007-03-05 |  | 43d |  | start no earlier than 2007-03-02 |  |  |
| 34 | 6.3 | Review tutorial | 1d? | 2007-03-02 | 2007-03-05 |  | 43d |  | start no earlier than 2007-03-02 |  |  |
| 35 | 6.4 | Review logging docs | 1d? | 2007-03-02 | 2007-03-05 |  | 43d |  | start no earlier than 2007-03-02 |  |  |
| 36 | 6.5 | Review IDE development | 1d? | 2007-03-02 | 2007-03-05 |  | 43d |  | start no earlier than 2007-03-02 |  |  |
| 37 | 6.6 | Review autoloader | 1d? | 2007-03-02 | 2007-03-05 |  | 43d |  | start no earlier than 2007-03-02 |  |  |
| 38 | 6.7 | Review dynamic web server example | 1d? | 2007-03-02 | 2007-03-05 |  | 43d |  | start no earlier than 2007-03-02 |  |  |
| 39 | 6.8 | Release Manager installs Forrest | 2h | 2007-03-02 | 2007-03-02 |  | 43.67d |  | start no earlier than 2007-03-02 | Steve | 2h |
| 41 | 7 | **Build/Release Process** | 1d? | 2007-03-02 | 2007-03-05 |  | 43d |  |  |  |  |
| 42 | 7.1 | Luntbuild to build core | 1d? | 2007-03-02 | 2007-03-05 |  | 43d |  | start no earlier than 2007-03-02 |  |  |
| 43 | 7.2 | Luntbuild to build components | 1d? | 2007-03-02 | 2007-03-05 |  | 43d |  | start no earlier than 2007-03-02 |  |  |
| 44 | 7.3 | Boomerang? | 1d? | 2007-03-02 | 2007-03-05 |  | 43d |  | start no earlier than 2007-03-02 |  |  |
| 46 | 7.4 | Defects | 1d? | 2007-03-02 | 2007-03-05 |  | 43d |  | start no earlier than 2007-03-02 |  |  |
| 49 | 8 | **Public Events** | 44d | 2007-03-02 | 2007-05-15 |  | 0d |  |  |  | 96h |
| 50 | 8.1 | ApacheCon slides+demo | 3d | 2007-03-02 | 2007-03-07 |  | 32.83d |  |  | Steve; Julio | 36h |
| 51 | 8.2 | ApacheCon | 3d | 2007-05-02 | 2007-05-07 | 50 | 0d |  | must start on 2007-05-02 | Steve; Julio | 36h |
| 52 | 8.3 | GGF20 | 4d | 2007-05-09 | 2007-05-15 |  | 0d |  | must start on 2007-05-09 | Steve | 24h |
| 53 | 9 | **Articles and Press** | 2d | 2007-03-02 | 2007-03-06 |  | 42d |  |  |  | 3h |
| 54 | 9.1 | Release press note | 3h | 2007-03-02 | 2007-03-02 |  | 43.5d | 7d |  | Julian Richards | 3h |
| 55 | 9.2 | TSS Article | 2d | 2007-03-02 | 2007-03-06 |  | 42d |  |  |  |  |
| 56 | 9.3 | HP Developer Articles | 2d | 2007-03-02 | 2007-03-06 |  | 42d |  |  |  |  |
